# SWE_AV02_Raspored_aktivnosti

Schedule from MS Project, 2017-03-06 to 2017-06-04, 4 hours a day.
SWETeam

## Calendars

- Standard: Mon-Sun 16:00-20:00.

## Resources

| Resource |
| --- |
| Architect |
| Architecture Reviewer |
| Business-Process Analyst |
| Business Designer |
| Business-Model Reviewer |
| Code Reviewer |
| Configuration Manager |
| Course Developer |
| Database Designer |
| Deployment Manager |
| Design Reviewer |
| Designer |
| Implementer |
| Integration Tester |
| Performance Tester |
| Process Engineer |
| Project Manager |
| Requirements Reviewer |
| Stakeholder |
| System Administrator |
| System Analyst |
| System Integrator |
| System Tester |
| Technical Writer |
| Test Designer |
| Tool Smith |
| Use-Case Author |
| User-Interface Designer |
| Milan |
| Sandra |
| Sandra |
| Nenad |
| Emilija |
| Jovana |
| Aleksandra |
| Emililja |
| Aleksandar |
| Petar |
| Jovan |

## Schedule

| ID | WBS | Task | Type | Duration | Start | Finish | Predecessors | Baseline start | Baseline finish | Baseline duration | Total slack | Free slack | Resources | Work |
| --- | --- | --- | --- | --- | --- | --- | --- | --- | --- | --- | --- | --- | --- | --- |
| 1 | 1 | **Očekivani rezultati** |  | 91d | 2017-03-06 | 2017-06-04 |  | 1998-06-11 | 1998-10-19 | 186d | 0d |  |  |  |
| 2 | 1.1 | Početak projekta | milestone | 0d | 2017-03-06 | 2017-03-06 | 17SS | 1998-06-11 | 1998-06-11 | 0d | 91d |  |  |  |
| 3 | 1.2 | Plan realizacije projekta | milestone | 0d | 2017-03-12 | 2017-03-12 | 19 |  |  |  | 84d |  |  |  |
| 4 | 1.3 | Vizija sistema | milestone | 0d | 2017-03-16 | 2017-03-16 | 20 | 1998-06-17 | 1998-06-17 | 0d | 80d |  |  |  |
| 5 | 1.4 | Dokument o zahtevima | milestone | 0d | 2017-03-26 | 2017-03-26 | 26 |  |  |  | 70d |  |  |  |
| 6 | 1.5 | Arhitekturni prototip | milestone | 0d | 2017-04-03 | 2017-04-03 | 27 |  |  |  | 62d |  |  |  |
| 7 | 1.6 | Prototip korisničkog interfejsa | milestone | 0d | 2017-04-15 | 2017-04-15 | 29 |  |  |  | 50d |  |  |  |
| 8 | 1.7 | Arhitekturni projekat | milestone | 0d | 2017-04-23 | 2017-04-23 | 30 | 1998-08-20 | 1998-08-20 | 0d | 42d |  |  |  |
| 9 | 1.8 | Detaljni projekat | milestone | 0d | 2017-05-07 | 2017-05-07 | 34 | 1998-10-06 | 1998-10-06 | 0d | 28d |  |  |  |
| 10 | 1.9 | Konačna verzija | milestone | 0d | 2017-05-10 | 2017-05-10 | 35 |  |  |  | 25d |  |  |  |
| 11 | 1.10 | Plan testiranja | milestone | 0d | 2017-05-14 | 2017-05-14 | 36 |  |  |  | 21d |  |  |  |
| 12 | 1.11 | Izveštaj o testiranju | milestone | 0d | 2017-05-16 | 2017-05-16 | 38 |  |  |  | 19d |  |  |  |
| 13 | 1.12 | Završna verzija | milestone | 0d | 2017-05-21 | 2017-05-21 | 39 |  |  |  | 14d |  |  |  |
| 14 | 1.13 | Korisničko uputstvo | milestone | 0d | 2017-06-03 | 2017-06-03 | 43 |  |  |  | 1d |  |  |  |
| 15 | 1.14 | Prezentacija proizvoda | milestone | 0d | 2017-06-04 | 2017-06-04 | 41 |  |  |  | 0d |  |  |  |
| 17 | 2 | **Faza planiranja projekta** |  | 14d | 2017-03-06 | 2017-03-19 |  | 1998-06-11 | 1998-06-17 | 10d | 0d |  |  | 168h |
| 18 | 2.1 | **Preliminarna iteracija** |  | 14d | 2017-03-06 | 2017-03-19 |  | 1998-06-11 | 1998-06-17 | 10d | 0d |  |  | 168h |
| 19 | 2.1.1 | Preliminarna analiza |  | 7d | 2017-03-06 | 2017-03-12 |  | 1998-06-11 | 1998-06-15 | 6d | 0d |  | Aleksandar; Petar; Jovan | 84h |
| 20 | 2.1.2 | Izrada vizije sistema |  | 4d | 2017-03-13 | 2017-03-16 | 19 | 1998-06-11 | 1998-06-17 | 10d | 0d |  | Aleksandar; Petar; Jovan | 48h |
| 21 | 2.1.3 | Modelovanje domena |  | 1d | 2017-03-17 | 2017-03-17 | 20 | 1998-06-11 | 1998-06-17 | 10d | 0d |  | Aleksandar; Petar; Jovan | 12h |
| 22 | 2.1.4 | Analiza slučajeva korišćenja |  | 2d | 2017-03-18 | 2017-03-19 | 21 | 1998-06-19 | 1998-06-23 | 6d | 0d |  | Aleksandar; Petar; Jovan | 24h |
| 24 | 3 | **Faza razrade projekta** |  | 35d | 2017-03-20 | 2017-04-23 | 17 | 1998-06-18 | 1998-08-20 | 92d | 0d |  |  | 324h |
| 25 | 3.1 | **Iteracija R1 - Razvoj arhitekturnog prototipa** |  | 35d | 2017-03-20 | 2017-04-23 |  | 1998-06-18 | 1998-07-20 | 46d | 0d |  |  | 324h |
| 26 | 3.1.1 | Izrada dokumenta o zahtevima |  | 7d | 2017-03-20 | 2017-03-26 |  | 1998-06-19 | 1998-06-25 | 10d | 28d | 0d | Jovan | 28h |
| 27 | 3.1.2 | Implementacija arhitekturnog prototipa |  | 15d | 2017-03-20 | 2017-04-03 |  | 1998-07-01 | 1998-07-10 | 16d | 0d |  | Aleksandar; Petar | 120h |
| 28 | 3.1.3 | Testiranje arhitekture |  | 1d | 2017-04-04 | 2017-04-04 | 27 | 1998-07-08 | 1998-07-16 | 14d | 0d |  | Aleksandar; Petar; Jovan | 12h |
| 29 | 3.1.4 | Implementacija prototipa korisničkog interfejsa |  | 11d | 2017-04-05 | 2017-04-15 | 28 | 1998-06-18 | 1998-07-20 | 46d | 0d |  | Aleksandar; Petar; Jovan | 132h |
| 30 | 3.1.5 | Izrada arhitekturnog projekta |  | 8d | 2017-04-16 | 2017-04-23 | 29 | 1998-06-23 | 1998-07-06 | 20d | 0d |  | Petar | 32h |

| ID | WBS | Task | Duration | Start | Finish | Predecessors | Baseline start | Baseline finish | Baseline duration | Total slack | Free slack | Resources | Work |
| --- | --- | --- | --- | --- | --- | --- | --- | --- | --- | --- | --- | --- | --- |
| 32 | 4 | **Faza izrade projekta** | 28d | 2017-04-24 | 2017-05-21 | 24 | 1998-08-21 | 1998-10-06 | 66d | 0d |  |  | 300h |
| 33 | 4.1 | **Iteracija I1 - Razvoj konačne verzije** | 28d | 2017-04-24 | 2017-05-21 |  | 1998-08-21 | 1998-09-04 | 22d | 0d |  |  | 300h |
| 34 | 4.1.1 | Izrada detaljnog projekta | 14d | 2017-04-24 | 2017-05-07 |  |  |  |  | 14d | 0d | Aleksandar | 56h |
| 35 | 4.1.2 | Implementacija konačne verzije | 17d | 2017-04-24 | 2017-05-10 |  | 1998-08-24 | 1998-08-31 | 12d | 0d |  | Petar; Jovan | 136h |
| 36 | 4.1.3 | Izrada plana testiranja | 4d | 2017-05-11 | 2017-05-14 | 35 |  |  |  | 0d |  | Aleksandar; Jovan | 32h |
| 37 | 4.1.4 | Testiranje sistema | 2d | 2017-05-15 | 2017-05-16 | 36 | 1998-08-24 | 1998-09-02 | 16d | 5d |  | Petar | 8h |
| 38 | 4.1.5 | Izrada izveštaja o testiranju | 2d | 2017-05-15 | 2017-05-16 | 36 | 1998-08-21 | 1998-09-04 | 22d | 0d |  | Jovan | 8h |
| 39 | 4.1.6 | Razvoj završne verzije | 5d | 2017-05-17 | 2017-05-21 | 38 |  |  |  | 0d |  | Aleksandar; Petar; Jovan | 60h |
| 40 | 5 | **Faza okončanja projekta** | 14d | 2017-05-22 | 2017-06-04 | 32 | 1998-10-07 | 1998-10-19 | 18d | 0d |  |  | 160h |
| 41 | 5.1 | **Iteracija O1 - Instalacija sistema** | 14d | 2017-05-22 | 2017-06-04 |  | 1998-10-07 | 1998-10-19 | 18d | 0d |  |  | 160h |
| 42 | 5.1.1 | Sređivanje projektne dokumentacije | 7d | 2017-05-22 | 2017-05-28 |  |  |  |  | 0d |  | Aleksandar; Petar; Jovan | 84h |
| 43 | 5.1.2 | Izrada korisničkog uputstva | 6d | 2017-05-29 | 2017-06-03 | 42 | 1998-10-07 | 1998-10-19 | 18d | 0d |  | Aleksandar; Petar; Jovan | 72h |
| 44 | 5.1.3 | Instalacija sistema | 1d | 2017-06-04 | 2017-06-04 | 43 |  |  |  | 0d |  | Jovan | 4h |
